# GTI-FMT-Cronograma_SI2022-013_Sprint2-v1-0

Schedule from MS Project, 2022-02-16 to 2022-02-25, 9 hours a day, A marks actual dates.

## Calendars

- Estándar: Mon-Fri 09:00-13:00, 15:00-19:00; Sat-Sun off.

## Resources

| Resource |
| --- |
| jReque |
| eSolari |

## Schedule

| ID | WBS | Task | Type | Duration | Start | Finish | Predecessors | Complete | Remaining | Total slack | Free slack | Constraint | Resources | Work | Actual work |
| --- | --- | --- | --- | --- | --- | --- | --- | --- | --- | --- | --- | --- | --- | --- | --- |
| 1 | 1 | **RQ-SSI_2022_013_PROCESO_REEMBOLSO_850_ESPECIAL** |  | 6.19d | 2022-02-16 A | 2022-02-25 |  | 48% | 3.2d | 0d |  |  |  | 105.2h | 38.2h |
| 2 | 1.1 | **Gestión del Mantenimiento** |  | 0.78d | 2022-02-16 | 2022-02-17 |  |  |  | 0.58d | 0d |  |  | 11h |  |
| 3 | 1.1.1 | **Inicio y Planificación** |  | 0.78d | 2022-02-16 | 2022-02-17 |  |  |  | 0.58d | 0d |  |  | 11h |  |
| 4 | 1.1.1.1 | Definir y crear repositorio para la documentación del proyecto | milestone | 0h | 2022-02-16 | 2022-02-16 |  |  |  | 0.58d | 0d | start no earlier than 2022-02-16 |  |  |  |
| 5 | 1.1.1.2 | Entregar lista de requerimientos y documentación complementaria a proveedor de tercerización | milestone | 0h | 2022-02-16 | 2022-02-16 | 4 |  |  | 0.58d | 0d |  |  |  |  |
| 6 | 1.1.1.3 | Hito: Observaciones del proveedor a lista de requerimientos recibidas | milestone | 0h | 2022-02-16 | 2022-02-16 | 5 |  |  | 0.58d | 0d |  |  |  |  |
| 7 | 1.1.1.4 | Levantar observaciones a lista de requerimientos | milestone | 0h | 2022-02-16 | 2022-02-16 | 6 |  |  | 0.58d | 0d |  |  |  |  |
| 8 | 1.1.1.5 | Hito: Estimación de esfuerzo realizada por el proveedor | milestone | 0h | 2022-02-16 | 2022-02-16 | 7 |  |  | 0.58d | 0d |  |  |  |  |
| 9 | 1.1.1.6 | Validar y dar conformidad a estimación | milestone | 0h | 2022-02-16 | 2022-02-16 | 8 |  |  | 0.58d | 0d |  |  |  |  |
| 10 | 1.1.1.7 | Hito: Estimación de esfuerzo aceptada | milestone | 0h | 2022-02-16 | 2022-02-16 | 9 |  |  | 0.58d | 0d |  |  |  |  |
| 11 | 1.1.1.8 | Hito: Propuesta técnica y cronograma elaborados por el proveedor | milestone | 0h | 2022-02-16 | 2022-02-16 | 10 |  |  | 0.58d | 0d |  |  |  |  |
| 12 | 1.1.1.9 | Validar y dar conformidad propuesta técnica | milestone | 0h | 2022-02-16 | 2022-02-16 | 11 |  |  | 0.58d | 0d |  |  |  |  |
| 13 | 1.1.1.10 | Hito: Propuesta técnica y cronograma aceptados | milestone | 0h | 2022-02-16 | 2022-02-16 | 12 |  |  | 0.58d | 0d |  |  |  |  |
| 14 | 1.1.1.11 | **Crear Plan de Proyecto** |  | 0d | 2022-02-16 | 2022-02-16 | 13 |  |  | 0.58d | 0d |  |  |  |  |
| 15 | 1.1.1.11.1 | Elaborar Documento Plan de Proyecto | milestone | 0h | 2022-02-16 | 2022-02-16 |  |  |  | 0.58d | 0d |  |  |  |  |
| 16 | 1.1.1.11.2 | Revisar Plan de Proyecto con los involucrados y patrocinador - revisión final | milestone | 0h | 2022-02-16 | 2022-02-16 | 15 |  |  | 0.58d |  |  |  |  |  |
| 17 | 1.1.1.12 | **Creación de cronograma** |  | 0.78d | 2022-02-16 | 2022-02-17 | 14 |  |  | 0.58d | 0d |  |  | 11h |  |
| 18 | 1.1.1.12.1 | Pre Análisis |  | 3h | 2022-02-16 | 2022-02-16 |  |  |  | 0.58d | 0d |  | jReque; eSolari | 6h |  |
| 19 | 1.1.1.12.2 | Elaboración de Modelo de Estimación |  | 1h | 2022-02-17 | 2022-02-17 | 18 |  |  | 0.58d | 0d |  | eSolari; jReque | 2h |  |
| 20 | 1.1.1.12.3 | Elaborar cronograma detallado de trabajo |  | 3h | 2022-02-17 | 2022-02-17 | 19 |  |  | 0.58d | 0d |  | jReque | 3h |  |
| 21 | 1.1.1.12.4 | Coordinar con revisor de QA las revisiones asignadas (fechas propuestas) | milestone | 0h | 2022-02-17 | 2022-02-17 | 20 |  |  | 0.58d |  |  |  |  |  |
| 22 | 1.1.1.13 | Elaborar matriz de riesgos y problemas | milestone | 0h | 2022-02-17 | 2022-02-17 | 17 |  |  | 0.58d | 0d |  | eSolari; jReque |  |  |
| 23 | 1.1.1.14 | Aprobar Plan y Cronograma del Proyecto (con personal involucrado y patrocinador) | milestone | 0h | 2022-02-17 | 2022-02-17 | 22 |  |  | 0.58d | 0d |  |  |  |  |
| 24 | 1.1.1.15 | Generar Linea Base del Plan del Proyecto y del Cronograma del Proyecto | milestone | 0h | 2022-02-17 | 2022-02-17 | 23 |  |  | 0.58d | 0d |  |  |  |  |
| 25 | 1.1.1.16 | Realizar reunión de Inicio | milestone | 0h | 2022-02-17 | 2022-02-17 | 24 |  |  | 0.58d | 0d |  |  |  |  |
| 26 | 1.1.1.17 | Cargar y actualizar documentos en el repositorio | milestone | 0h | 2022-02-17 | 2022-02-17 | 25 |  |  | 0.58d | 0d |  |  |  |  |
| 27 | 1.1.1.18 | Realizar Revisión QA2 | milestone | 0h | 2022-02-17 | 2022-02-17 | 26 |  |  | 0.58d | 0d |  |  |  |  |
| 28 | 1.1.1.19 | Hito: Revisión QA2 completa | milestone | 0h | 2022-02-17 | 2022-02-17 | 27 |  |  | 0.58d | 0d |  |  |  |  |
| 29 | 1.1.1.20 | Hito: Fin Inicio y Planificación | milestone | 0h | 2022-02-17 | 2022-02-17 | 28 |  |  | 0.58d |  |  |  |  |  |

| ID | WBS | Task | Type | Duration | Start | Finish | Predecessors | Complete | Remaining | Total slack | Free slack | Work | Actual work |
| --- | --- | --- | --- | --- | --- | --- | --- | --- | --- | --- | --- | --- | --- |
| 30 | 1.1.2 | **Seguimiento y Control** |  | 0d | 2022-02-17 | 2022-02-17 | 3 |  |  | 0.58d | 0d |  |  |
| 31 | 1.1.2.1 | Preparación del ambiente de desarrollo | milestone | 0h | 2022-02-17 | 2022-02-17 |  |  |  | 0.58d |  |  |  |
| 32 | 1.1.2.2 | Inducción al equipo de programación asignado | milestone | 0h | 2022-02-17 | 2022-02-17 |  |  |  | 0.58d |  |  |  |
| 33 | 1.1.2.3 | Reuniones con el equipo de programación | milestone | 0h | 2022-02-17 | 2022-02-17 |  |  |  | 0.58d |  |  |  |
| 34 | 1.1.2.4 | Reuniones con Usuarios | milestone | 0h | 2022-02-17 | 2022-02-17 |  |  |  | 0.58d |  |  |  |
| 35 | 1.1.2.5 | Reuniones de Informe de Avance | milestone | 0h | 2022-02-17 | 2022-02-17 |  |  |  | 0.58d |  |  |  |
| 36 | 1.1.2.6 | Gestionar Control de Cambios al Proyecto | milestone | 0h | 2022-02-17 | 2022-02-17 |  |  |  | 0.58d |  |  |  |
| 37 | 1.1.2.7 | Cargar y actualizar documentos en el repositorio | milestone | 0h | 2022-02-17 | 2022-02-17 |  |  |  | 0.58d |  |  |  |
| 38 | 1.1.2.8 | Realizar Revisiones QA5 (Sección 1) | milestone | 0h | 2022-02-17 | 2022-02-17 |  |  |  | 0.58d | 0d |  |  |
| 39 | 1.1.2.9 | Hito: Revisiones QA5 (Sección 1) completas | milestone | 0h | 2022-02-17 | 2022-02-17 | 38 |  |  | 0.58d |  |  |  |
| 40 | 1.1.3 | **Cierre del Proyecto** |  | 0d | 2022-02-17 | 2022-02-17 | 30 |  |  | 0.58d |  |  |  |
| 41 | 1.1.3.1 | Preparar Acta de cierre del proyecto | milestone | 0h | 2022-02-17 | 2022-02-17 |  |  |  | 0.58d | 0d |  |  |
| 42 | 1.1.3.2 | Aprobación del requerimiento | milestone | 0h | 2022-02-17 | 2022-02-17 | 41 |  |  | 0.58d | 0d |  |  |
| 43 | 1.1.3.3 | Cargar y actualizar documentos en el repositorio | milestone | 0h | 2022-02-17 | 2022-02-17 | 42 |  |  | 0.58d | 0d |  |  |
| 44 | 1.1.3.4 | Realizar Revisiones QA5 (Sección 3) | milestone | 0h | 2022-02-17 | 2022-02-17 | 43 |  |  | 0.58d | 0d |  |  |
| 45 | 1.1.3.5 | Hito: Revisión QA5 (Sección 3) completa | milestone | 0h | 2022-02-17 | 2022-02-17 | 44 |  |  | 0.58d | 0d |  |  |
| 46 | 1.1.3.6 | Hito: Fin del Proyecto | milestone | 0h | 2022-02-17 | 2022-02-17 | 45 |  |  | 0.58d |  |  |  |
| 47 | 1.2 | **Desarrollo de la solución** |  | 5.41d | 2022-02-17 A | 2022-02-25 | 2 | 53% | 2.55d | 0d |  | 94.2h | 38.2h |
| 48 | 1.2.1 | **Requerimientos** |  | 0d | 2022-02-17 | 2022-02-17 |  |  |  | 0.58d | 0d |  |  |
| 49 | 1.2.1.1 | Hito: Recepción de entregable Modelo de Datos y Procesos | milestone | 0h | 2022-02-17 | 2022-02-17 |  |  |  | 0.58d | 0d |  |  |
| 50 | 1.2.1.2 | Revisar entregable Modelo de Datos y Procesos | milestone | 0h | 2022-02-17 | 2022-02-17 | 49 |  |  | 0.58d | 0d |  |  |
| 51 | 1.2.1.3 | Hito: Recepción de entregable Matriz de Trazabilidad | milestone | 0h | 2022-02-17 | 2022-02-17 | 50 |  |  | 0.58d | 0d |  |  |
| 52 | 1.2.1.4 | Revisar entregable Matriz de Trazabilidad | milestone | 0h | 2022-02-17 | 2022-02-17 | 51 |  |  | 0.58d | 0d |  |  |
| 53 | 1.2.1.5 | Hito: Aprobación de entregables de Requerimientos | milestone | 0h | 2022-02-17 | 2022-02-17 | 52 |  |  | 0.58d | 0d |  |  |
| 54 | 1.2.1.6 | Realizar Revisión QA3 | milestone | 0h | 2022-02-17 | 2022-02-17 | 53 |  |  | 0.58d | 0d |  |  |
| 55 | 1.2.1.7 | Hito: Revisión QA3 completa | milestone | 0h | 2022-02-17 | 2022-02-17 | 54 |  |  | 0.58d | 0d |  |  |
| 56 | 1.2.1.8 | Hito: Fin Requerimientos | milestone | 0h | 2022-02-17 | 2022-02-17 | 55 |  |  | 0.58d |  |  |  |

| ID | WBS | Task | Type | Duration | Start | Finish | Predecessors | Complete | Remaining | Total slack | Free slack | Resources | Work | Actual work |
| --- | --- | --- | --- | --- | --- | --- | --- | --- | --- | --- | --- | --- | --- | --- |
| 57 | 1.2.2 | **Análisis y Diseño** |  | 0.63d | 2022-02-17 | 2022-02-18 | 48 |  |  | 0.58d | 0d |  | 10.2h |  |
| 58 | 1.2.2.1 | Análisis del requerimiento |  | 1.5h | 2022-02-17 | 2022-02-17 |  |  |  | 0.58d | 0d | jReque; eSolari | 3h |  |
| 59 | 1.2.2.2 | Revisión de Historias de Usuario |  | 1h | 2022-02-17 | 2022-02-17 | 58 |  |  | 0.58d | 0d | jReque; eSolari | 2h |  |
| 60 | 1.2.2.3 | Completar historias de usuario |  | 2h | 2022-02-17 | 2022-02-18 | 59 |  |  | 0.58d | 0d | jReque; eSolari | 4h |  |
| 61 | 1.2.2.4 | Hito: Recepción de entregable Diseño Externo | milestone | 0h | 2022-02-18 | 2022-02-18 | 60 |  |  | 0.58d | 0d |  |  |  |
| 62 | 1.2.2.5 | Revisar entregable Modelo de Diseño Externo | milestone | 0h | 2022-02-18 | 2022-02-18 | 61 |  |  | 0.58d | 0d |  |  |  |
| 63 | 1.2.2.6 | Coordinar con usuario revisión de diseño externo | milestone | 0h | 2022-02-18 | 2022-02-18 | 62 |  |  | 0.58d | 0d |  |  |  |
| 64 | 1.2.2.7 | Hito: Aprobación de Diseño Externo por usuario | milestone | 0h | 2022-02-18 | 2022-02-18 | 63 |  |  | 0.58d | 0d |  |  |  |
| 65 | 1.2.2.8 | Hito: Recepción de entregable Diseño Técnico | milestone | 0h | 2022-02-18 | 2022-02-18 | 64 |  |  | 0.58d | 0d |  |  |  |
| 66 | 1.2.2.9 | Elaborar entregable Diseño Técnico |  | 1h | 2022-02-18 | 2022-02-18 | 65 |  |  | 0.58d | 0d | jReque | 1h |  |
| 67 | 1.2.2.10 | Revisión y ajuste del diseño técnico |  | 0.2h | 2022-02-18 | 2022-02-18 | 66 |  |  | 0.58d | 0d | eSolari | 0.2h |  |
| 68 | 1.2.2.11 | Revisar actualización de matriz de trazabilidad de requerimientos | milestone | 0h | 2022-02-18 | 2022-02-18 | 67 |  |  | 0.58d | 0d |  |  |  |
| 69 | 1.2.2.12 | Hito: Aprobación de entregables de Análisis y Diseño | milestone | 0h | 2022-02-18 | 2022-02-18 | 68 |  |  | 0.58d | 0d |  |  |  |
| 70 | 1.2.2.13 | Hito: Revisión Matriz de Casos de Prueba | milestone | 0h | 2022-02-18 | 2022-02-18 | 69 |  |  | 0.58d | 0d | jReque |  |  |
| 71 | 1.2.2.14 | Hito: Fin Análisis y Diseño | milestone | 0h | 2022-02-18 | 2022-02-18 | 70 |  |  | 0.58d |  |  |  |  |
| 72 | 1.2.3 | **Construcción y Pruebas en Desarrollo** |  | 4.61d | 2022-02-18 A | 2022-02-25 |  | 59% | 1.9d | 0d |  |  | 81h | 38.2h |
| 73 | 1.2.3.1 | Hito: Recepción de componentes y casos de prueba (1) | milestone | 0h | 2022-02-18 | 2022-02-18 | 57 |  |  | 0.58d | 0d |  |  |  |
| 74 | 1.2.3.2 | HU007: Reporte Liquidación de Pagos STI& Reporte Liquidación de Vencimiento STI | milestone | 0h | 2022-02-18 | 2022-02-18 | 73 |  |  | 4.61d |  | jReque |  |  |
| 75 | 1.2.3.3 | HU008: Proceso de Valorización Cartera esquema especial |  | 12h | 2022-02-18 A | 2022-02-21 A | 74 | 100% |  |  |  | jReque | 12h | 12h |
| 76 | 1.2.3.4 | HU009: Confirmación del Proceso de Valorización |  | 6h | 2022-02-21 A | 2022-02-22 A | 75 | 100% |  |  |  | jReque | 6h | 6h |
| 77 | 1.2.3.5 | HU010: Liquidación de operaciones |  | 6h | 2022-02-22 A | 2022-02-23 A | 76 | 100% |  |  |  | jReque | 6h | 6h |
| 78 | 1.2.3.6 | HU006: Reporte Repo Monedas | milestone | 0h | 2022-02-18 | 2022-02-18 | 73 |  |  | 0.17d | 0d | eSolari |  |  |
| 79 | 1.2.3.7 | HU011: Reporte Solicitud de Reembolso |  | 8h | 2022-02-18 A | 2022-02-21 | 78 | 65% | 2.8h | 3.72d |  | eSolari | 8h | 5.2h |
| 80 | 1.2.3.8 | HU012: Reporte Resumen de Valorización |  | 4.5h | 2022-02-21 A | 2022-02-21 A | 79 | 100% |  |  |  | eSolari | 4.5h | 4.5h |
| 81 | 1.2.3.9 | HU013: Reporte Operaciones Vigentes |  | 4.5h | 2022-02-21 A | 2022-02-22 A | 80 | 100% |  |  |  | eSolari | 4.5h | 4.5h |
| 82 | 1.2.3.10 | HU014: Reporte de Vcto Anticipado Repo con Garantía |  | 4.5h | 2022-02-22 | 2022-02-22 | 81 |  |  | 0.17d | 0d | eSolari | 4.5h |  |

| ID | WBS | Task | Type | Duration | Start | Finish | Predecessors | Total slack | Resources | Work |
| --- | --- | --- | --- | --- | --- | --- | --- | --- | --- | --- |
| 83 | 1.2.3.11 | **Revisión de componentes (1)** |  | 0.94d | 2022-02-22 | 2022-02-23 |  | 0d |  | 13h |
| 84 | 1.2.3.11.1 | Revisar código - cumplimiento de estándar |  | 1h | 2022-02-22 | 2022-02-23 | 82 | 0.17d | eSolari | 1h |
| 85 | 1.2.3.11.2 | Realizar pruebas de integración |  | 4h | 2022-02-23 | 2022-02-23 | 84, 77 | 0d | jReque; eSolari | 8h |
| 86 | 1.2.3.11.3 | Ajustes pruebas de integración |  | 2h | 2022-02-23 | 2022-02-23 | 85 | 0d | jReque; eSolari | 4h |
| 87 | 1.2.3.12 | Realizar pruebas con especialista BCRP |  | 4h | 2022-02-23 | 2022-02-24 | 83 | 0d | jReque; eSolari | 8h |
| 88 | 1.2.3.13 | Realizar pruebas con el usuario | milestone | 0h | 2022-02-24 | 2022-02-24 | 87 | 0d |  |  |
| 89 | 1.2.3.14 | Ajustes a código fuente |  | 1h | 2022-02-24 | 2022-02-24 | 88 | 0d | jReque; eSolari | 2h |
| 90 | 1.2.3.15 | Hito: Entrega del Código fuente | milestone | 0h | 2022-02-24 | 2022-02-24 | 89 | 0.72d |  |  |
| 91 | 1.2.3.16 | Hito: Conformidad de pruebas con el usuario | milestone | 0h | 2022-02-24 | 2022-02-24 | 89 | 0d |  |  |
| 92 | 1.2.3.17 | Hito: Recepción de Documentación de Construcción | milestone | 0h | 2022-02-24 | 2022-02-24 | 91 | 0d |  |  |
| 93 | 1.2.3.18 | Completar con evidencias Matriz de Casos de Prueba |  | 3h | 2022-02-24 | 2022-02-24 | 92 | 0d | jReque; eSolari | 6h |
| 94 | 1.2.3.19 | Elaboración de documento de Guía de Despliegue |  | 1h | 2022-02-24 | 2022-02-25 | 93 | 0.06d | eSolari | 1h |
| 95 | 1.2.3.20 | Elaborar documentación administrativa de pase a producción (OPA, Bitácora, scripts) |  | 1.5h | 2022-02-24 | 2022-02-25 | 93 | 0d | jReque | 1.5h |
| 96 | 1.2.3.21 | Elaborar guía de usuario |  | 2h | 2022-02-25 | 2022-02-25 | 95, 94 | 0d | jReque; eSolari | 4h |
| 97 | 1.2.3.22 | Hito: Fin Construcción y Pruebas en Desarrollo | milestone | 0h | 2022-02-25 | 2022-02-25 | 96 | 0d |  |  |
| 98 | 1.2.4 | **Pruebas en Calidad** |  | 0.17d | 2022-02-25 | 2022-02-25 | 72 | 0d |  | 3h |
| 99 | 1.2.4.1 | Hito: Inicio de Pruebas en Calidad | milestone | 0h | 2022-02-25 | 2022-02-25 |  | 0d |  |  |
| 100 | 1.2.4.2 | Preparar ambiente para Pruebas en Calidad | milestone | 0h | 2022-02-25 | 2022-02-25 | 99 | 0d |  |  |
| 101 | 1.2.4.3 | Revisión de documentación | milestone | 0h | 2022-02-25 | 2022-02-25 | 100 | 0d |  |  |
| 102 | 1.2.4.4 | Elaboración de formatos de calidad | milestone | 0h | 2022-02-25 | 2022-02-25 | 101 | 0d |  |  |
| 103 | 1.2.4.5 | **Ejecutar ciclo (1) de pruebas** |  | 0.17d | 2022-02-25 | 2022-02-25 | 102 | 0d |  | 3h |
| 104 | 1.2.4.5.1 | Realizar pruebas | milestone | 0h | 2022-02-25 | 2022-02-25 |  | 0d |  |  |
| 105 | 1.2.4.5.2 | Levantar observaciones |  | 1.5h | 2022-02-25 | 2022-02-25 | 104 | 0d | jReque; eSolari | 3h |
| 106 | 1.2.4.6 | Ejecutar ciclo (2) de pruebas | milestone | 0h | 2022-02-25 | 2022-02-25 | 103 | 0d |  |  |
| 107 | 1.2.4.7 | Ejecutar ciclo (n) de pruebas | milestone | 0h | 2022-02-25 | 2022-02-25 | 106 | 0d |  |  |
| 108 | 1.2.4.8 | Generar Baseline de fuentes y ejecutables (Harvest) | milestone | 0h | 2022-02-25 | 2022-02-25 | 107 | 0d |  |  |
| 109 | 1.2.4.9 | Elaborar documentación para el pase a producción | milestone | 0h | 2022-02-25 | 2022-02-25 | 108 | 0d |  |  |
| 110 | 1.2.4.10 | Hito: Fin Pruebas en Calidad | milestone | 0h | 2022-02-25 | 2022-02-25 | 109 | 0d |  |  |

| ID | WBS | Task | Type | Duration | Start | Finish | Predecessors | Total slack |
| --- | --- | --- | --- | --- | --- | --- | --- | --- |
| 111 | 1.2.5 | **Despliegue en Producción** |  | 0d | 2022-02-25 | 2022-02-25 | 98 | 0d |
| 112 | 1.2.5.1 | Coordinar pase a producción | milestone | 0h | 2022-02-25 | 2022-02-25 |  | 0d |
| 113 | 1.2.5.2 | Realizar pase a producción | milestone | 0h | 2022-02-25 | 2022-02-25 | 112 | 0d |
| 114 | 1.2.5.3 | Hito: Conformidad del pase a producción | milestone | 0h | 2022-02-25 | 2022-02-25 | 113 | 0d |
| 115 | 1.2.6 | Otras etapas de ingeniería que el proyecto requiere (Pilotos, Migración de datos, Pruebas en Paralelo, etc.) | milestone | 0h | 2022-02-25 | 2022-02-25 | 111 | 0d |
